| slug | name | description | methodology | start_date | calendar | default_view | labels | dependencies | baselines | risks | wbs_path | delivery_mode | status | assignee | percent_complete | duration | planned_start | estimate | is_milestone | links |
| --- | --- | --- | --- | --- | --- | --- | --- | --- | --- | --- | --- | --- | --- | --- | --- | --- | --- | --- | --- | --- |
| bayside-sitework | Sitework & Structure | The below-grade and structural scope — site prep, foundation, and framing up to a topped-out structure. | WATERFALL | A-90 | site | SCHEDULE | critical-path Critical path rose 0, inspection Inspection gate amber 1, weather Weather-sensitive cyan 2, change-order Change order purple 3 | 1.1 1.2 FS 0, 1.1 1.3 SS 0, 1.2 1.4 FS 0, 1.3 1.4 FS 0, 1.4 2.1 FS 0, 2.1 2.2 FS 0, 2.2 2.3 FS 0, 2.2 2.4 SS 0, 2.3 2.5 FS 7, 2.4 2.5 FF 0, 2.5 3.1 FS 0, 3.1 3.2 FS 0, 3.1 3.3 FS 0, 3.2 3.4 FF 0, 3.3 3.4 FF 0, 3.4 4 FS 0 | Contract baseline  A-88 1.1 A-90 A-86 4, 1.2 A-82 A-76 6, 1.3 A-70 A-67 3, 1.4 A-64 A-62 2, 2.1 A-60 A-55 5, 2.2 A-50 A-44 6, 2.3 A-38 A-35 3, 2.4 A-32 A-29 3, 2.5 A-26 A-22 4, 3.1 A-18 A-10 8, 3.2 A-2 A+4 6, 3.3 A+10 A+17 7, 3.4 A+24 A+26 2 | weather Weather delays outdoor phases OPEN 4 3 EXTERNAL MITIGATE sam NWS issues a hazardous-weather outlook covering a scheduled pour or steel-pick window, or sustained winds forecast above 25 mph. Stand the site down and reschedule into the next clear window. The contract's winter weather allowance is already carried on the site calendar; it is the constraint that pushes the certificate of occupancy, and days beyond it are the ones that become a time-extension request. 2.3, 2.4, soil-conditions Unsuitable bearing material at excavation The east footing sits over a mapped alluvial channel; if bearing comes back below the design assumption the footing has to be taken deeper. OPEN 2 4 TECHNICAL MITIGATE tom A-56 Geotech logs allowable bearing below the 2,500 psf design assumption at any footing location. Over-excavate the soft zone and replace with engineered fill, taking the east footing down to competent strata. Budgeted at 3 crew-days against the foundation contingency allowance; no change order to the owner. REALIZED. The mitigation was a spot geotech survey ahead of rebar. It found the soft layer but did not prevent it: bearing came back at 1,800 psf against a 2,500 psf design assumption, so the footing could not be built as drawn. Contingency fired on day 34 — the east footing was over-excavated and backfilled with engineered fill, and excavation ran 5 days to 8. Closed once the plate-load re-test passed at depth. 2.1, permit-delay Building permit approval slips The municipal permit office is running 3 weeks behind; gates site prep sign-off. OPEN 3 5 EXTERNAL MITIGATE sam A-64 Permit still shows "in review" on the municipal portal 10 working days before site-prep sign-off is due. Request a partial foundation-only permit so excavation can start against the approved civil package while the building permit finishes review. 1.4, labor Concrete crew availability OPEN 3 3 ORGANIZATIONAL MITIGATE tom 2.3, design-change Owner-requested design change order OPEN 3 4 PROJECT_MANAGEMENT MITIGATE diego 3.1, crane-availability Tower crane scheduling conflict OPEN 2 3 ORGANIZATIONAL MITIGATE tom The leasing yard cannot confirm the tower crane for a booked pick week. Fall back to the 90-ton mobile crane for the light picks and resequence roof steel behind decking. Costs a week of double-handling, which the framing float absorbs. Crane window booked and confirmed for the structural phase. The annual inspection stand-down is on the site calendar; framing carries enough float to absorb it without moving the certificate of occupancy. 3.3, material-escalation Steel & concrete price escalation ACCEPTED 4 3 EXTERNAL ACCEPT omar 3.2 |  |  |  |  |  |  |  |  |  |  |
|  | · Site Prep |  |  |  |  |  |  |  |  |  | 1 | waterfall |  |  |  |  |  |  |  |  |
|  | · Mobilize site |  |  |  |  |  |  |  |  |  | 1.1 | waterfall | COMPLETE | nadia | 100.0 | 4 | A-90 | 3 4 8 |  |  |
|  | · Clear & grade |  |  |  |  |  | critical-path |  |  |  | 1.2 | waterfall | COMPLETE | omar | 100.0 | 6 | A-82 | 4 6 11 |  |  |
|  | · Temporary utilities |  |  |  |  |  |  |  |  |  | 1.3 | waterfall | COMPLETE | diego | 100.0 | 3 | A-70 | 2 3 6 |  |  |
|  | · Site survey sign-off |  |  |  |  |  | inspection |  |  |  | 1.4 | waterfall | COMPLETE | tom | 100.0 | 2 | A-64 | 1 2 4 |  |  |
|  | · Foundation |  |  |  |  |  |  |  |  |  | 2 | waterfall |  |  |  |  |  |  |  |  |
|  | · Excavate footings |  |  |  |  |  | critical-path |  |  |  | 2.1 | waterfall | COMPLETE | omar | 100.0 | 8 | A-60 | 6 8 15 |  |  |
|  | · Rebar & formwork |  |  |  |  |  | critical-path, inspection |  |  |  | 2.2 | waterfall | COMPLETE | diego | 100.0 | 6 | A-50 | 4 6 11 |  |  |
|  | · Pour east footing |  |  |  |  |  | weather |  |  |  | 2.3 | waterfall | COMPLETE | tom | 100.0 | 3 | A-38 | 2 3 6 |  |  |
|  | · Pour west footing |  |  |  |  |  | weather |  |  |  | 2.4 | waterfall | COMPLETE | nadia | 100.0 | 3 | A-32 | 2 3 6 |  |  |
|  | · Cure & strip forms |  |  |  |  |  | critical-path |  |  |  | 2.5 | waterfall | COMPLETE | omar | 100.0 | 4 | A-26 | 3 4 8 |  |  |
|  | · Framing |  |  |  |  |  |  |  |  |  | 3 | waterfall |  |  |  |  |  |  |  |  |
|  | · Steel erection |  |  |  |  |  | critical-path |  |  |  | 3.1 | waterfall | IN_PROGRESS | diego | 55.0 | 8 | A-18 | 6 8 15 |  |  |
|  | · Floor decking |  |  |  |  |  | change-order |  |  |  | 3.2 | waterfall | NOT_STARTED | tom |  | 8 | A+5 | 6 8 15 |  |  |
|  | · Roof structure |  |  |  |  |  | weather |  |  |  | 3.3 | waterfall | NOT_STARTED | nadia |  | 7 | A+19 | 5 7 13 |  |  |
|  | · Framing inspection |  |  |  |  |  | critical-path, inspection |  |  |  | 3.4 | waterfall | NOT_STARTED | omar |  | 2 | A+33 | 1 2 4 |  |  |
|  | · Structure topped out |  |  |  |  |  | critical-path |  |  |  | 4 | milestone |  |  |  |  | A+37 |  | True |  |
| bayside-building | Building & Fit-out | The interior scope — MEP rough-in, finishes, and commissioning through to a certificate of occupancy. Every task is gated on the structure passing framing inspection. | WATERFALL | A-90 | site | SCHEDULE | critical-path Critical path rose 0, long-lead Long-lead procurement amber 1, inspection Inspection gate teal 2, commissioning Commissioning green 3 | bayside-sitework:3.4 1.1 FS -3, bayside-sitework:3.4 1.2 FS 0, bayside-sitework:3.4 1.3 FS 0, 1.1 1.5 FS 0, 1.2 1.5 FS 0, 1.3 1.5 FS 0, 1.5 2.1 FS 0, 2.1 2.2 FS 0, 2.1 2.3 FS 0, 2.2 2.4 SF 0, 2.2 2.5 FS 0, 2.3 2.5 FS 0, 2.5 3 FS 0, 2.4 3 FS 0 | Contract baseline True A-88 1.1 A+28 A+35 7, 1.2 A+42 A+48 6, 1.3 A+54 A+62 8, 1.4 A+70 A+75 5, 1.5 A+80 A+83 3, 2.1 A+86 A+94 8, 2.2 A+102 A+108 6, 2.3 A+114 A+119 5, 2.5 A+126 A+129 3 | supply-chain MEP equipment supply delay MITIGATING 3 5 EXTERNAL MITIGATE nadia A+30 Quoted lead time on the rooftop units exceeds 16 weeks, or the vendor misses a confirmed ship date. Release the alternate manufacturer already approved in the submittal, and set the units after the building is dried in rather than before. 1.4, electrical-inspection Electrical rough-in inspection rework MITIGATING 3 3 TECHNICAL MITIGATE nadia 1.5, subcontractor-default MEP subcontractor financial risk Primary MEP sub is over-extended; default would strand the rough-in. OPEN 2 5 EXTERNAL TRANSFER sam The sub misses two consecutive payment-application cycles, or its surety declines to extend the bond at renewal. The bond is called and the surety completes the rough-in with a replacement sub of its choosing. TRANSFERRED, not mitigated. The MEP subcontract was written to require a 100% payment-and-performance bond from an A-rated surety before mobilization, so the financial exposure of a default sits with the surety rather than the owner. What is NOT transferred is the schedule: replacing a defaulted sub mid-rough-in still costs an estimated 4-6 weeks, which is why this stays OPEN at probability 2 and impact 5 rather than being closed out on the strength of the bond. 1.4, commissioning-delay Building-systems commissioning slips occupancy OPEN 3 4 TECHNICAL MITIGATE diego 2.4 |  |  |  |  |  |  |  |  |  |  |
|  | · MEP |  |  |  |  |  |  |  |  |  | 1 | waterfall |  |  |  |  |  |  |  |  |
|  | · Rough-in electrical |  |  |  |  |  | critical-path |  |  |  | 1.1 | waterfall | NOT_STARTED | nadia |  | 7 | A+37 | 5 7 13 |  | bayside-sitework:3.4 relates_to Electrical rough-in mobilizes three days ahead of this framing inspection — see the structural gate for the cert date. |
|  | · Rough-in plumbing |  |  |  |  |  |  |  |  |  | 1.2 | waterfall | NOT_STARTED | omar |  | 6 | A+51 | 4 6 11 |  |  |
|  | · HVAC ductwork |  |  |  |  |  |  |  |  |  | 1.3 | waterfall | NOT_STARTED | diego |  | 8 | A+63 | 6 8 15 |  |  |
|  | · MEP equipment delivery |  |  |  |  |  | long-lead |  |  |  | 1.4 | waterfall | NOT_STARTED | tom |  | 5 | A+79 | 4 5 10 |  |  |
|  | · MEP inspection |  |  |  |  |  | inspection |  |  |  | 1.5 | waterfall | NOT_STARTED | nadia |  | 3 | A+89 | 2 3 6 |  | 2.5 duplicates If the AHJ allows a combined walk, the standalone MEP inspection folds into final handover — dedupe before scheduling. |
|  | · Finish-out |  |  |  |  |  |  |  |  |  | 2 | waterfall |  |  |  |  |  |  |  |  |
|  | · Drywall & paint |  |  |  |  |  | critical-path |  |  |  | 2.1 | waterfall | NOT_STARTED | omar |  | 8 | A+95 | 6 8 15 |  |  |
|  | · Flooring |  |  |  |  |  |  |  |  |  | 2.2 | waterfall | NOT_STARTED | diego |  | 6 | A+111 | 4 6 11 |  |  |
|  | · Fixtures & casework |  |  |  |  |  |  |  |  |  | 2.3 | waterfall | NOT_STARTED | tom |  | 5 | A+123 | 4 5 10 |  |  |
|  | · Commissioning start |  |  |  |  |  | commissioning |  |  |  | 2.4 | milestone | NOT_STARTED | nadia |  |  | A+133 |  | True |  |
|  | · Final inspection & handover |  |  |  |  |  | critical-path, inspection |  |  |  | 2.5 | waterfall | NOT_STARTED | omar |  | 3 | A+135 | 2 3 6 |  |  |
|  | · Certificate of occupancy |  |  |  |  |  | critical-path |  |  |  | 3 | milestone |  |  |  |  | A+141 |  | True |  |
